# 版本开发计划

Schedule from MS Project, 2020-06-01 to 2020-06-30, A marks actual dates.

## Calendars

- 标准: Mon-Fri 08:00-12:00, 13:00-17:00; Sat-Sun off.

## Resources

| Resource |
| --- |
| 李昕 |
| 高晓斌 |
| 薛松 |
| 方超 |
| ALL |
| ? |

## Schedule

| ID | WBS | Task | Duration | Start | Finish | Predecessors | Complete | Remaining | Baseline start | Baseline finish | Baseline duration | Total slack | Free slack | Constraint | Resources | Work | Actual work |
| --- | --- | --- | --- | --- | --- | --- | --- | --- | --- | --- | --- | --- | --- | --- | --- | --- | --- |
| 1 | 1 | **扫描软件专题** | 11d | 2020-06-01 A | 2020-06-15 |  | 58% | 4.63d | 2020-06-01 | 2020-06-15 | 11d | 11d |  |  |  | 184h | 120h |
| 2 | 1.1 | 视野太多时退出视野 | 2d | 2020-06-01 A | 2020-06-02 A |  | 100% |  | 2020-06-01 | 2020-06-02 | 2d |  |  |  | 高晓斌 | 16h | 16h |
| 3 | 1.2 | 扫描后上载的解耦 | 3d | 2020-06-03 A | 2020-06-05 A | 2 | 100% |  | 2020-06-03 | 2020-06-05 | 3d |  |  |  | 高晓斌 | 24h | 24h |
| 4 | 1.3 | 通过预览图识别玻片位置异常 | 4d | 2020-06-08 A | 2020-06-11 A | 3 | 100% |  | 2020-06-08 | 2020-06-11 | 4d |  |  |  | 高晓斌; 李昕 | 64h | 64h |
| 5 | 1.4 | 玻片质量预判方案 | 3d | 2020-06-01 | 2020-06-03 |  |  |  | 2020-06-01 | 2020-06-03 | 3d | 16d | 0d |  | 李昕 | 24h |  |
| 6 | 1.5 | 玻片图像纠偏方案 | 3d | 2020-06-04 | 2020-06-08 | 5 |  |  | 2020-06-04 | 2020-06-08 | 3d | 16d |  |  | 李昕 | 24h |  |
| 7 | 1.6 | 10倍图扫描优化可行性分析 | 2d | 2020-06-12 | 2020-06-15 | 4 |  |  | 2020-06-12 | 2020-06-15 | 2d | 11d |  |  | 高晓斌 | 16h |  |
| 8 | 1.7 | 送片机接口变更 | 2d | 2020-06-01 A | 2020-06-02 A |  | 100% |  | 2020-06-01 | 2020-06-02 | 2d |  |  |  | 高晓斌 | 16h | 16h |
| 10 | 2 | **扫描分析客户端软件** | 22d? | 2020-06-01 A | 2020-06-30 |  | 68% | 7d? | 2020-06-01 | 2020-06-30 | 22d? | 0d |  |  |  | 264h | 264h |
| 11 | 2.1 | 右边图像显示区域支持细胞操作 | 5d | 2020-06-01 A | 2020-06-05 A |  | 100% |  | 2020-06-01 | 2020-06-05 | 5d |  |  | finish no earlier than 2020-06-05 | 薛松 | 40h | 40h |
| 12 | 2.2 | AnalyzeWindow中增加状态栏 | 2d | 2020-06-05 A | 2020-06-08 A |  | 100% |  | 2020-06-05 | 2020-06-08 | 2d |  |  | start no earlier than 2020-06-05 | 薛松 | 16h | 16h |
| 13 | 2.3 | 巨核细胞计数功能 | 5d | 2020-06-08 A | 2020-06-12 A | 11 | 100% |  | 2020-06-08 | 2020-06-12 | 5d |  |  |  | 薛松; 李昕 | 80h | 80h |
| 14 | 2.4 | **玻片数据加载性能优化** | 10d | 2020-06-15 A | 2020-06-26 A |  | 100% |  | 2020-06-15 | 2020-06-26 | 10d |  |  |  |  | 80h | 80h |
| 15 | 2.4.1 | 延迟下载细胞轮廓 | 1d | 2020-06-15 A | 2020-06-15 A |  | 100% |  | 2020-06-15 | 2020-06-15 | 1d |  |  | start no earlier than 2020-06-15 | 薛松 | 8h | 8h |
| 16 | 2.4.2 | 以并行方式下载视野缩略图 | 1d | 2020-06-16 A | 2020-06-16 A | 15 | 100% |  | 2020-06-16 | 2020-06-16 | 1d |  |  | start no earlier than 2020-06-15 | 薛松 | 8h | 8h |
| 17 | 2.4.3 | 以并行方式下载细胞信息 | 1d | 2020-06-17 A | 2020-06-17 A | 16 | 100% |  | 2020-06-17 | 2020-06-17 | 1d |  |  |  | 薛松 | 8h | 8h |
| 18 | 2.4.4 | 以并行方式下载细胞图片 | 1d | 2020-06-17 A | 2020-06-17 A | 17 | 100% |  | 2020-06-17 | 2020-06-17 | 1d |  |  |  | 薛松 | 8h | 8h |
| 19 | 2.4.5 | Cache视野缩略图 | 0.5d | 2020-06-19 A | 2020-06-19 A | 18 | 100% |  | 2020-06-19 | 2020-06-19 | 0.5d |  |  |  | 薛松 | 4h | 4h |
| 20 | 2.4.6 | Cache细胞信息 | 0.5d | 2020-06-19 A | 2020-06-19 A | 19 | 100% |  | 2020-06-19 | 2020-06-19 | 0.5d |  |  |  | 薛松 | 4h | 4h |
| 21 | 2.4.7 | Cache细胞图片 | 0.5d | 2020-06-22 A | 2020-06-22 A | 20 | 100% |  | 2020-06-22 | 2020-06-22 | 0.5d |  |  |  | 薛松 | 4h | 4h |
| 22 | 2.4.8 | Cache细胞轮廓 | 0.5d | 2020-06-22 A | 2020-06-22 A | 21 | 100% |  | 2020-06-22 | 2020-06-22 | 0.5d |  |  |  | 薛松 | 4h | 4h |
| 23 | 2.4.9 | 【紧急】解决Qt5.12.0下面只有一个元素时map()挂死的问题 | 3d | 2020-06-21 A | 2020-06-24 A |  | 100% |  | 2020-06-21 | 2020-06-24 | 3d |  |  | start no earlier than 2020-06-22 | 薛松 | 24h | 24h |
| 24 | 2.4.10 | 支持一次性下载Slide的细胞信息的新接口 | 1d | 2020-06-26 A | 2020-06-26 A | 23 | 100% |  | 2020-06-26 | 2020-06-26 | 1d |  |  |  | 薛松 | 8h | 8h |
| 25 | 2.5 | 新增未保存的细胞特别标出 | 1d | 2020-06-17 A | 2020-06-17 A |  | 100% |  | 2020-06-17 | 2020-06-17 | 1d |  |  | start no earlier than 2020-06-17 | 薛松 | 8h | 8h |

Notes:
- 2: 6-8版本
- 3: 6-8版本
- 4: 6-15版本, 尽量反合6-8版本
- 5: 6-15版本
- 6: 6-15版本
- 8: 时间待定, 取决于单板侧联调
- 11: 6-8版本
- 12: 6-15版本
- 13: 6-15版本
- 23: 莫名其妙出来的问题。 以前没有出现。

| ID | WBS | Task | Type | Duration | Start | Finish | Predecessors | Complete | Remaining | Baseline start | Baseline finish | Baseline duration | Total slack | Constraint | Resources | Work | Actual work |
| --- | --- | --- | --- | --- | --- | --- | --- | --- | --- | --- | --- | --- | --- | --- | --- | --- | --- |
| 26 | 2.6 | **工程切换到Qt5.14.2** |  | 1d? | 2020-06-22 A | 2020-06-22 A |  | 100% |  | 2020-06-22 | 2020-06-22 | 1d? |  |  |  |  |  |
| 27 | 2.6.1 | 工程切换到Qt5.14.2 |  | 1d? | 2020-06-22 A | 2020-06-22 A |  | 100% |  | 2020-06-22 | 2020-06-22 | 1d? |  | start no earlier than 2020-06-22 |  |  |  |
| 28 | 2.6.2 | 安装包切换到Qt5.14.2 |  | 1d? | 2020-06-22 A | 2020-06-22 A |  | 100% |  | 2020-06-22 | 2020-06-22 | 1d? |  | start no earlier than 2020-06-22 |  |  |  |
| 29 | 2.7 | 【紧急】解决在外周血时保存结果时崩溃的问题 |  | 3d | 2020-06-18 A | 2020-06-22 A |  | 100% |  | 2020-06-18 | 2020-06-22 | 3d |  | start no earlier than 2020-06-18 | 薛松 | 24h | 24h |
| 30 | 2.8 | **支持在百倍图中标注和修改巨核细胞** |  | 0d | 2020-06-21 A | 2020-06-21 A |  | 100% |  | 2020-06-21 | 2020-06-21 | 0d |  |  | 薛松 |  |  |
| 31 | 2.8.1 | 细胞上下文菜单中同时显示白细胞和巨核分类 | milestone | 0d | 2020-06-21 A | 2020-06-21 A |  | 100% |  | 2020-06-21 | 2020-06-21 | 0d |  | start no earlier than 2020-06-19 | 薛松 |  |  |
| 32 | 2.8.2 | 调整描细胞轮廓时的缩放比例, 让巨核能画下 | milestone | 0d | 2020-06-21 A | 2020-06-21 A | 31 | 100% |  | 2020-06-21 | 2020-06-21 | 0d |  | start no earlier than 2020-06-19 | 薛松 |  |  |
| 33 | 2.9 | 工程重构, 按组件分目录 |  | 1d | 2020-06-24 A | 2020-06-24 A |  | 100% |  | 2020-06-24 | 2020-06-24 | 1d |  |  | 薛松 | 8h | 8h |
| 34 | 2.10 | AnalyzeWindow加载时在SplashScreen中显示进度条 |  | 1d | 2020-06-26 A | 2020-06-26 A |  | 100% |  | 2020-06-26 | 2020-06-26 | 1d |  | start no earlier than 2020-06-26 | 薛松 | 8h | 8h |
| 35 | 2.11 | 重新实现About对话框 |  | 1d | 2020-06-26 A | 2020-06-26 | 34 |  | 1d | 2020-06-26 | 2020-06-26 | 1d | 0d | start no earlier than 2020-06-26 |  |  |  |
| 36 | 2.12 | 在视野中双击细胞跳转到分类的位置 |  | 2d | 2020-06-29 | 2020-06-30 | 35 |  |  | 2020-06-29 | 2020-06-30 | 2d | 0d |  |  |  |  |
| 37 | 2.13 | **【临床】和扫描端深度融合** |  | 2d | 2020-06-29 | 2020-06-30 |  |  |  | 2020-06-29 | 2020-06-30 | 2d | 0d |  |  |  |  |
| 38 | 2.13.1 | 通过扫描端启动， 跳过数据库连接界面直接显示玻片列表 |  | 2d | 2020-06-29 | 2020-06-30 | 35 |  |  | 2020-06-29 | 2020-06-30 | 2d | 0d |  |  |  |  |
| 39 | 2.14 | **成熟红细胞分类显示** |  | 1d? | 2020-06-01 | 2020-06-01 |  |  |  | 2020-06-01 | 2020-06-01 | 1d? | 21d |  |  |  |  |
| 40 | 2.14.1 | 支持红细胞扫描视野显示 |  | 1d? | 2020-06-01 | 2020-06-01 |  |  |  | 2020-06-01 | 2020-06-01 | 1d? | 21d |  |  |  |  |
| 41 | 2.14.2 | 支持红细胞分类 |  | 1d? | 2020-06-01 | 2020-06-01 |  |  |  | 2020-06-01 | 2020-06-01 | 1d? | 21d |  |  |  |  |
| 42 | 2.15 | 显示图像缩放比例 |  | 1d? | 2020-06-01 | 2020-06-01 |  |  |  | 2020-06-01 | 2020-06-01 | 1d? | 21d |  |  |  |  |
| 43 | 2.16 | 支持比例尺显示 |  | 1d? | 2020-06-01 | 2020-06-01 |  |  |  | 2020-06-01 | 2020-06-01 | 1d? | 21d |  |  |  |  |
| 44 | 2.17 | 支持CatalogView中的细胞拖放 |  | 1d? | 2020-06-01 | 2020-06-01 |  |  |  | 2020-06-01 | 2020-06-01 | 1d? | 21d |  |  |  |  |
| 45 | 2.18 | 支持从ImageView向CatalogView中的拖放 |  | 1d? | 2020-06-01 | 2020-06-01 |  |  |  | 2020-06-01 | 2020-06-01 | 1d? | 21d |  |  |  |  |
| 46 | 2.19 | <新任务> |  | 1d? | 2020-06-01 | 2020-06-01 |  |  |  | 2020-06-01 | 2020-06-01 | 1d? | 21d |  |  |  |  |
| 47 | 2.20 | <新任务> |  | 1d? | 2020-06-01 | 2020-06-01 |  |  |  | 2020-06-01 | 2020-06-01 | 1d? | 21d |  |  |  |  |
| 48 | 2.21 | <新任务> |  | 1d? | 2020-06-01 | 2020-06-01 |  |  |  | 2020-06-01 | 2020-06-01 | 1d? | 21d |  |  |  |  |
| 50 | 3 | **专题工作** |  | 15d | 2020-06-01 A | 2020-06-19 |  | 67% | 5d | 2020-06-01 | 2020-06-19 | 15d | 7d |  |  | 216h | 96h |
| 51 | 3.1 | **扫描后长时间看不到结果优化** |  | 10d | 2020-06-01 A | 2020-06-12 A |  | 100% |  | 2020-06-01 | 2020-06-12 | 10d |  |  |  | 16h | 16h |
| 52 | 3.1.1 | 方案确定 |  | 2d | 2020-06-01 A | 2020-06-02 A |  | 100% |  | 2020-06-01 | 2020-06-02 | 2d |  |  | ALL | 16h | 16h |
| 53 | 3.1.2 | 方案落实(金域演示前合入) |  | 8d | 2020-06-03 A | 2020-06-12 A | 52 | 100% |  | 2020-06-03 | 2020-06-12 | 8d |  |  |  |  |  |

Notes:
- 26: 5.12解决了并发的问题. 不需要了.
- 29: CellItem::title()函数有分支没有返回值. 编译告警未注意. 特别标出未保存的细胞时引入的问题
- 52: 6/2 头脑风暴讨论一下
- 53: 6-15版本, 反合6/8演示版本

| ID | WBS | Task | Type | Duration | Start | Finish | Predecessors | Complete | Baseline start | Baseline finish | Baseline duration | Total slack | Constraint | Resources | Work | Actual work |
| --- | --- | --- | --- | --- | --- | --- | --- | --- | --- | --- | --- | --- | --- | --- | --- | --- |
| 56 | 3.2 | **其他任务** |  | 7d | 2020-06-01 | 2020-06-09 |  |  | 2020-06-01 | 2020-06-09 | 7d | 15d |  |  | 120h |  |
| 57 | 3.2.1 | 模型检测程序 |  | 5d | 2020-06-01 | 2020-06-05 |  |  | 2020-06-01 | 2020-06-05 | 5d | 17d |  | 方超; 薛松 | 80h |  |
| 58 | 3.2.2 | 金域玻片标记训练 |  | 5d | 2020-06-03 | 2020-06-09 |  |  | 2020-06-03 | 2020-06-09 | 5d | 15d | start no earlier than 2020-06-03 | 方超 | 40h |  |
| 60 | 3.3 | **系统测试** |  | 10d | 2020-06-08 A | 2020-06-19 A |  | 100% | 2020-06-08 | 2020-06-19 | 10d |  |  |  | 80h | 80h |
| 61 | 3.3.1 | 6-8版本系统测试 |  | 5d | 2020-06-08 A | 2020-06-12 A | 67 | 100% | 2020-06-08 | 2020-06-12 | 5d |  |  | ? | 40h | 40h |
| 62 | 3.3.2 | 6-15版本系统测试 |  | 5d | 2020-06-15 A | 2020-06-19 A | 68 | 100% | 2020-06-15 | 2020-06-19 | 5d |  |  | ? | 40h | 40h |
| 66 | 3.3.3 | **版本发布计划** |  | 5d | 2020-06-08 A | 2020-06-15 A |  | 100% | 2020-06-08 | 2020-06-15 | 5d |  |  |  |  |  |
| 67 | 3.3.3.1 | 6月8日版本(金域演示) | milestone | 0d | 2020-06-08 A | 2020-06-08 A | 2, 3, 11 | 100% | 2020-06-08 | 2020-06-08 | 0d |  | start no earlier than 2020-06-08 |  |  |  |
| 68 | 3.3.3.2 | 6月15日版本 | milestone | 0d | 2020-06-15 A | 2020-06-15 A |  | 100% | 2020-06-15 | 2020-06-15 | 0d |  | start no earlier than 2020-06-15 |  |  |  |

Notes:
- 67: 用于给金域演示, 留一周测试时间
