# PC端版本计划.202006

Schedule from MS Project, 2020-06-01 to 2020-07-31, A marks actual dates.

## Calendars

- 标准: Mon-Fri 08:00-12:00, 13:00-17:00; Sat-Sun off.

## Resources

| Resource |
| --- |
| 薛松 |
| 测试1 |
| 测试2 |
| 测试3 |

## Schedule

| ID | WBS | Task | Type | Duration | Start | Finish | Predecessors | Complete | Remaining | Baseline start | Baseline finish | Baseline duration | Total slack | Free slack | Constraint |
| --- | --- | --- | --- | --- | --- | --- | --- | --- | --- | --- | --- | --- | --- | --- | --- |
| 1 | 1 | **六月份工作计划** |  | 21d? | 2020-06-01 A | 2020-06-29 |  | 94% | 1.22d? | 2020-06-01 | 2020-06-25 | 19d? | 23d |  |  |
| 2 | 1.1 | **通用优化** |  | 18d | 2020-06-04 A | 2020-06-29 |  | 75% | 4.5d | 2020-06-16 | 2020-06-23 | 6d | 23d |  |  |
| 3 | 1.1.1 | 增加日志机制 |  | 2d | 2020-06-04 A | 2020-06-05 A | 9 | 100% |  | 2020-06-16 | 2020-06-17 | 2d |  |  |  |
| 4 | 1.1.2 | 为APP增加图标 |  | 1d | 2020-06-18 A | 2020-06-18 A | 3 | 100% |  | 2020-06-18 | 2020-06-18 | 0.5d |  |  |  |
| 5 | 1.1.3 | connection 标签中显示port |  | 1d | 2020-06-22 A | 2020-06-22 A | 4 | 100% |  | 2020-06-18 | 2020-06-18 | 0.5d |  |  |  |
| 6 | 1.1.4 | 重构工程目录 |  | 1d | 2020-06-23 A | 2020-06-23 A | 5 | 100% |  | 2020-06-19 | 2020-06-19 | 1d |  |  |  |
| 7 | 1.1.5 | AnalyzeWindow的Splash中显示进度条 |  | 1d | 2020-06-26 A | 2020-06-26 A | 6 | 100% |  | 2020-06-22 | 2020-06-22 | 1d |  |  |  |
| 8 | 1.1.6 | 实现版本对话框 |  | 2d | 2020-06-26 A | 2020-06-29 | 7 |  | 2d | 2020-06-23 | 2020-06-23 | 1d | 23d |  |  |
| 9 | 1.2 | **Image页面中支持对细胞的操作** |  | 13d? | 2020-06-01 A | 2020-06-18 |  | 83% | 2.17d? | 2020-06-01 | 2020-06-15 | 11d? | 30d |  |  |
| 10 | 1.2.1 | 控制是否显示细胞 |  | 1d? | 2020-06-03 A | 2020-06-03 A |  | 100% |  | 2020-06-03 | 2020-06-03 | 1d? |  |  | start no earlier than 2020-06-03 |
| 11 | 1.2.2 | 增加右边的细胞上下文菜单 | milestone | 0d | 2020-06-01 A | 2020-06-01 A | 10 | 100% |  | 2020-06-04 | 2020-06-04 | 1d |  |  |  |
| 12 | 1.2.3 | 重新梳理事件传递流程, 并文档化 |  | 6d | 2020-06-02 A | 2020-06-09 A | 11 | 100% |  | 2020-06-05 | 2020-06-09 | 3d |  |  |  |
| 13 | 1.2.4 | toolkit的同步显示 | milestone | 0d? | 2020-06-04 A | 2020-06-04 A | 12 | 100% |  | 2020-06-10 | 2020-06-10 | 1d? |  |  |  |
| 14 | 1.2.5 | 【缺陷修改】解决CatalogView中删除细胞后在ImageView中不能同步更新的问题 |  | 2d | 2020-06-03 A | 2020-06-04 A |  | 100% |  | 2020-06-03 | 2020-06-03 | 1d |  |  | start no earlier than 2020-06-03 |
| 15 | 1.2.6 | 【BUG】解决细胞个数和比例显示错误的问题 | milestone | 0d | 2020-06-02 A | 2020-06-02 A | 14 | 100% |  | 2020-06-04 | 2020-06-04 | 1d |  |  |  |
| 16 | 1.2.7 | 细胞标题上显示object_id |  | 1d? | 2020-06-16 A | 2020-06-16 A | 13 | 100% |  | 2020-06-11 | 2020-06-11 | 1d? |  |  |  |
| 17 | 1.2.8 | CatalogView中双击细胞在ImageView中跳转 |  | 1d | 2020-06-17 | 2020-06-17 | 16 |  |  | 2020-06-12 | 2020-06-12 | 1d | 30d | 0d |  |
| 18 | 1.2.9 | ImageView中双击细胞在CatalogView中跳转 |  | 1d | 2020-06-18 | 2020-06-18 | 17 |  |  | 2020-06-15 | 2020-06-15 | 1d | 30d |  |  |
| 19 | 1.2.10 | 未保存的细胞特别标出 | milestone | 0d? | 2020-06-13 A | 2020-06-14 A |  | 100% |  | 2020-06-01 | 2020-06-01 | 1d? |  |  |  |
| 20 | 1.3 | **AnalyzeWindow中增加状态栏** |  | 1d | 2020-06-13 A | 2020-06-15 A |  | 100% |  | 2020-06-09 | 2020-06-11 | 2.5d |  |  |  |
| 21 | 1.3.1 | 增加状态栏机制 | milestone | 0d | 2020-06-13 A | 2020-06-13 A |  | 100% |  | 2020-06-09 | 2020-06-09 | 0.5d |  |  | start no earlier than 2020-06-09 |
| 22 | 1.3.2 | 在状态栏中显示处理信息 | milestone | 0d | 2020-06-13 A | 2020-06-13 A | 21 | 100% |  | 2020-06-09 | 2020-06-09 | 0.5d |  |  |  |
| 23 | 1.3.3 | 在状态栏中显示玻片信息 | milestone | 0d | 2020-06-14 A | 2020-06-14 A | 22 | 100% |  | 2020-06-10 | 2020-06-10 | 0.5d |  |  |  |
| 24 | 1.3.4 | 在状态栏中显示视野信息 |  | 1d | 2020-06-15 A | 2020-06-15 A | 23 | 100% |  | 2020-06-10 | 2020-06-10 | 0.5d |  |  |  |
| 25 | 1.3.5 | 在状态栏中显示细胞个数 | milestone | 0d | 2020-06-14 A | 2020-06-14 A | 24 | 100% |  | 2020-06-11 | 2020-06-11 | 0.5d |  |  |  |

| ID | WBS | Task | Duration | Start | Finish | Predecessors | Complete | Baseline start | Baseline finish | Baseline duration | Constraint |
| --- | --- | --- | --- | --- | --- | --- | --- | --- | --- | --- | --- |
| 27 | 1.4 | **支持巨核细胞** | 16d | 2020-06-01 A | 2020-06-22 A |  | 100% | 2020-06-08 | 2020-06-24 | 13d |  |
| 28 | 1.4.1 | 支持骨髓显示多视野 | 1d | 2020-06-02 A | 2020-06-02 A |  | 100% | 2020-06-08 | 2020-06-09 | 2d | start no earlier than 2020-06-08 |
| 29 | 1.4.2 | 重构代码, 合并Gallery和Tile视图 | 4d | 2020-06-01 A | 2020-06-04 A | 28 | 100% | 2020-06-10 | 2020-06-11 | 2d | start no earlier than 2020-06-08 |
| 30 | 1.4.3 | 重构代码, 合并两个Provider | 3d | 2020-06-02 A | 2020-06-04 A | 29 | 100% | 2020-06-12 | 2020-06-15 | 2d |  |
| 31 | 1.4.4 | 重构代码, 合并两个GraphicsItem | 3d | 2020-06-03 A | 2020-06-05 A | 30 | 100% | 2020-06-16 | 2020-06-16 | 1d |  |
| 32 | 1.4.5 | 数据库格式变更的适配性工作 | 2d | 2020-06-09 A | 2020-06-10 A | 31 | 100% | 2020-06-17 | 2020-06-19 | 3d |  |
| 33 | 1.4.6 | 要求黄海在Action中增加path | 1d | 2020-06-16 A | 2020-06-16 A | 32 | 100% | 2020-06-22 | 2020-06-23 | 2d |  |
| 34 | 1.4.7 | 分类字典中增加family字段后的适配以及上下文菜单 | 2d | 2020-06-11 A | 2020-06-12 A | 32 | 100% | 2020-06-22 | 2020-06-22 | 1d |  |
| 35 | 1.4.8 | 细胞上下文菜单中同时显示白细胞和巨核的分类 | 1d | 2020-06-21 A | 2020-06-22 A | 34 | 100% | 2020-06-23 | 2020-06-23 | 1d |  |
| 36 | 1.4.9 | 新增巨核细胞时, ImageView的缩放比例改为0.8 | 2d | 2020-06-17 A | 2020-06-18 A | 35 | 100% | 2020-06-24 | 2020-06-24 | 1d |  |
| 38 | 1.5 | **性能优化** | 10d | 2020-06-15 A | 2020-06-26 A |  | 100% | 2020-06-15 | 2020-06-25 | 9d |  |
| 39 | 1.5.1 | 延迟下载action的轮廓数据 | 1d | 2020-06-16 A | 2020-06-16 A |  | 100% | 2020-06-15 | 2020-06-15 | 1d | start no earlier than 2020-06-15 |
| 40 | 1.5.2 | 使用outlines | 1d | 2020-06-16 A | 2020-06-16 A | 39 | 100% | 2020-06-16 | 2020-06-16 | 0.5d |  |
| 41 | 1.5.3 | 增加是否显示细胞轮廓的工具栏 | 1d | 2020-06-16 A | 2020-06-16 A | 40 | 100% | 2020-06-16 | 2020-06-16 | 0.5d |  |
| 42 | 1.5.4 | CellGraphicsItem的paint触发轮廓下载 | 2d | 2020-06-16 A | 2020-06-17 A | 41 | 100% | 2020-06-17 | 2020-06-17 | 1d |  |
| 43 | 1.5.5 | **重构getTaskResult()函数** | 10d | 2020-06-15 A | 2020-06-26 A |  | 100% | 2020-06-18 | 2020-06-25 | 6d |  |
| 44 | 1.5.5.1 | 使用blockmap()来并发下载视野预览图 | 2d | 2020-06-15 A | 2020-06-16 A | 42 | 100% | 2020-06-18 | 2020-06-18 | 1d |  |
| 45 | 1.5.5.2 | 使用blockmapped()来并发下载细胞信息 | 2d | 2020-06-15 A | 2020-06-16 A | 44 | 100% | 2020-06-19 | 2020-06-19 | 0.5d |  |
| 46 | 1.5.5.3 | 使用blockmap()来并发下载细胞图 | 2d | 2020-06-15 A | 2020-06-16 A | 45 | 100% | 2020-06-19 | 2020-06-19 | 0.5d |  |
| 47 | 1.5.5.4 | 视野预览图大图和瓦片\支持cache | 1d | 2020-06-17 A | 2020-06-17 A | 46 | 100% | 2020-06-17 | 2020-06-17 | 1d |  |
| 48 | 1.5.5.5 | 细胞图支持cache | 1d | 2020-06-17 A | 2020-06-17 A | 47 | 100% | 2020-06-22 | 2020-06-22 | 0.5d |  |
| 49 | 1.5.5.6 | 细胞轮廓支持cache | 1d | 2020-06-17 A | 2020-06-17 A | 48 | 100% | 2020-06-23 | 2020-06-23 | 0.5d |  |
| 50 | 1.5.5.7 | 支持新增的批量下载玻片细胞的新接口, 自动选择 | 1d | 2020-06-26 A | 2020-06-26 A |  | 100% | 2020-06-25 | 2020-06-25 | 1d | start no earlier than 2020-06-25 |
| 51 | 1.5.5.8 | 【紧急】更换电脑后map()在只有一个的时候挂死 | 4d | 2020-06-22 A | 2020-06-25 A |  | 100% | 2020-06-22 | 2020-06-23 | 2d | start no earlier than 2020-06-22 |

| ID | WBS | Task | Type | Duration | Start | Finish | Predecessors | Complete | Baseline start | Baseline finish | Baseline duration | Total slack | Free slack | Constraint | Resources | Work |
| --- | --- | --- | --- | --- | --- | --- | --- | --- | --- | --- | --- | --- | --- | --- | --- | --- |
| 53 | 1.6 | **计划外任务** |  | 11d? | 2020-06-05 A | 2020-06-19 A |  | 100% | 2020-06-01 | 2020-06-10 | 8d? |  |  |  |  |  |
| 54 | 1.6.1 | 【BUG】解决切换视野时toolkit导致崩溃的问题 |  | 2d | 2020-06-08 A | 2020-06-09 A |  | 100% | 2020-06-01 | 2020-06-01 | 1d |  |  |  |  |  |
| 55 | 1.6.2 | 【BUG】解决打开外周血崩溃的问题 |  | 1d | 2020-06-05 A | 2020-06-07 A |  | 100% | 2020-06-04 | 2020-06-05 | 2d |  |  | start no earlier than 2020-06-04 |  |  |
| 56 | 1.6.3 | 【BUG】解决内存泄露问题 |  | 2d | 2020-06-09 A | 2020-06-10 A |  | 100% | 2020-06-09 | 2020-06-10 | 2d |  |  | start no earlier than 2020-06-09 |  |  |
| 57 | 1.6.4 | 【BUG】外周血显示错误 |  | 1d | 2020-06-05 A | 2020-06-05 A |  | 100% | 2020-06-01 | 2020-06-01 | 1d? |  |  | start no earlier than 2020-06-04 |  |  |
| 58 | 1.6.5 | 【BUG】点击CatalogView中的细胞崩溃 |  | 2d | 2020-06-08 A | 2020-06-09 A |  | 100% |  |  |  |  |  | start no earlier than 2020-06-09 |  |  |
| 59 | 1.6.6 | 【BUG】PageSize使用错误 |  | 1d? | 2020-06-19 A | 2020-06-19 A |  | 100% | 2020-06-19 | 2020-06-19 | 0.5d |  |  |  |  |  |
| 60 | 1.6.7 | 【BUG】新增细胞崩溃 |  | 1d? | 2020-06-19 A | 2020-06-19 A |  | 100% |  |  |  |  |  |  |  |  |
| 62 | 2 | **七月份工作计划** |  | 44d? | 2020-06-01 | 2020-07-31 |  |  | 2020-06-01 | 2020-07-02 | 24d? | 0d |  |  |  | 888h |
| 63 | 2.1 | 开始 | milestone | 0d | 2020-07-01 | 2020-07-01 |  |  |  |  |  | 0d |  | must start on 2020-07-01 |  |  |
| 64 | 2.2 | **Service优化** |  | 5d | 2020-07-01 | 2020-07-07 | 63 |  |  |  |  | 17d |  |  |  | 80h |
| 65 | 2.2.1 | 解决多线程并发时报告警的问题 |  | 5d | 2020-07-01 | 2020-07-07 |  |  |  |  |  | 17d |  |  | 薛松 | 40h |
| 66 | 2.2.2 | 解决Qt5.12多线程不稳定的问题 |  | 5d | 2020-07-01 | 2020-07-07 |  |  |  |  |  | 17d |  |  | 薛松 | 40h |
| 68 | 2.3 | **Frame界面优化** |  | 5d | 2020-07-01 | 2020-07-07 | 63 |  |  |  |  | 17d |  |  |  | 80h |
| 69 | 2.3.1 | 适配连续外周血类别 |  | 1d | 2020-07-01 | 2020-07-01 |  |  |  |  |  | 17d | 0d |  | 薛松 | 8h |
| 70 | 2.3.2 | 增加状态栏 |  | 2d | 2020-07-02 | 2020-07-03 | 69 |  |  |  |  | 17d | 0d |  | 薛松 | 16h |
| 71 | 2.3.3 | 增加菜单和工具栏机制 |  | 2d | 2020-07-06 | 2020-07-07 | 70 |  |  |  |  | 17d |  |  | 薛松 | 16h |
| 72 | 2.3.4 | 彻底规避Qt TableView对proxyModel支持不好的bug |  | 5d | 2020-07-01 | 2020-07-07 |  |  |  |  |  | 17d |  |  | 薛松 | 40h |
| 74 | 2.4 | **日志优化** |  | 3d | 2020-06-01 | 2020-06-03 |  |  |  |  |  | 41d |  |  |  | 40h |
| 75 | 2.4.1 | 不同级别日志保存到不同的文件中 |  | 2d | 2020-06-01 | 2020-06-02 |  |  |  |  |  | 42d |  |  | 薛松 | 16h |
| 76 | 2.4.2 | 解决日志丢失问题 |  | 3d | 2020-06-01 | 2020-06-03 |  |  |  |  |  | 41d |  |  | 薛松 | 24h |
| 78 | 2.5 | **AnalyzeWindow界面优化** |  | 2d | 2020-07-01 | 2020-07-02 | 63 |  |  |  |  | 20d |  |  |  | 32h |
| 79 | 2.5.1 | CatalogView放到Dock Window中 |  | 2d | 2020-07-01 | 2020-07-02 |  |  |  |  |  | 20d |  |  | 薛松 | 16h |
| 80 | 2.5.2 | ImageListView放到Dock Window中 |  | 2d | 2020-07-01 | 2020-07-02 |  |  |  |  |  | 20d |  |  | 薛松 | 16h |

Notes:
- 79: 价值不高, 待评估
- 80: 价值不高, 待评估

| ID | WBS | Task | Duration | Start | Finish | Predecessors | Baseline start | Baseline finish | Baseline duration | Total slack | Free slack | Constraint | Resources | Work |
| --- | --- | --- | --- | --- | --- | --- | --- | --- | --- | --- | --- | --- | --- | --- |
| 82 | 2.6 | **ImageView优化** | 18d | 2020-07-01 | 2020-07-24 | 63 |  |  |  | 4d |  |  |  | 304h |
| 83 | 2.6.1 | **细胞标记和操作** | 12d | 2020-07-01 | 2020-07-16 |  |  |  |  | 10d |  |  |  | 176h |
| 84 | 2.6.1.1 | 细胞上下文菜单优化. 一级+二级 | 1d | 2020-07-01 | 2020-07-01 |  |  |  |  | 10d | 0d |  | 薛松 | 8h |
| 85 | 2.6.1.2 | 支持Toolkit中点击鼠标进行大图跳转 | 2d | 2020-07-02 | 2020-07-03 | 84 |  |  |  | 10d | 0d | start no earlier than 2020-07-01 | 薛松 | 16h |
| 86 | 2.6.1.3 | 解决外周血第一次显示时视野显示比例错误的问题 | 3d | 2020-07-06 | 2020-07-08 | 85 |  |  |  | 10d | 0d |  | 薛松 | 24h |
| 87 | 2.6.1.4 | 画细胞轮廓的优化处理 | 3d | 2020-07-09 | 2020-07-13 | 86 |  |  |  | 10d | 0d |  | 薛松 | 24h |
| 88 | 2.6.1.5 | 支持undo列表可查看 | 3d | 2020-07-14 | 2020-07-16 | 87 |  |  |  | 10d |  |  | 薛松 | 24h |
| 89 | 2.6.1.6 | 支持新增细胞在线分类 | 1d | 2020-07-01 | 2020-07-01 |  |  |  |  | 21d |  |  | 薛松 | 8h |
| 90 | 2.6.1.7 | CatalogView中细胞右上角显示改动标记，新增，修改，逻辑删除等标记 | 2d | 2020-07-01 | 2020-07-02 |  |  |  |  | 20d |  |  | 薛松 | 16h |
| 91 | 2.6.1.8 | 查看细胞的历史修改记录 | 5d | 2020-07-01 | 2020-07-07 |  |  |  |  | 17d |  |  | 薛松 | 40h |
| 92 | 2.6.1.9 | 细胞边界轮廓显示优化 | 2d | 2020-07-01 | 2020-07-02 |  |  |  |  | 20d |  |  | 薛松 | 16h |
| 94 | 2.6.2 | **显示比例尺** | 5d | 2020-07-10 | 2020-07-16 |  |  |  |  | 1d | 0d |  |  | 40h |
| 95 | 2.6.2.1 | 在ImageView中显示缩放比例 | 2d | 2020-07-10 | 2020-07-13 | 105 | 2020-06-01 | 2020-06-01 | 1d | 1d | 0d |  | 薛松 | 16h |
| 96 | 2.6.2.2 | 在ImageView中显示比例尺 | 3d | 2020-07-14 | 2020-07-16 | 95 | 2020-06-01 | 2020-06-01 | 2d | 1d |  |  | 薛松 | 24h |
| 98 | 2.6.3 | **支持Drag方式修改细胞类别** | 6d | 2020-07-17 | 2020-07-24 |  | 2020-06-01 | 2020-06-01 | 1d? | 1d | 0d |  |  | 48h |
| 99 | 2.6.3.1 | 支持CatalogView中的细胞拖放 | 3d | 2020-07-17 | 2020-07-21 | 94 | 2020-06-01 | 2020-06-01 | 3d | 1d | 0d |  | 薛松 | 24h |
| 100 | 2.6.3.2 | 支持ImageView到CatalogView的细胞拖放 | 3d | 2020-07-22 | 2020-07-24 | 99 | 2020-06-01 | 2020-06-01 | 3d | 1d |  |  | 薛松 | 24h |
| 102 | 2.6.4 | **CatalogView优化** | 5d | 2020-07-01 | 2020-07-07 |  |  |  |  | 17d |  |  |  | 40h |
| 103 | 2.6.4.1 | 支持细胞过滤功能 | 5d | 2020-07-01 | 2020-07-07 |  |  |  |  | 17d |  |  | 薛松 | 40h |
| 105 | 2.7 | **和扫描软件融合** | 7d | 2020-07-01 | 2020-07-09 | 63 | 2020-07-01 | 2020-07-02 | 2d | -1d | 0d |  |  | 56h |
| 106 | 2.7.1 | 扫描软件启动客户端时, 跳过数据库连接选择 | 2d | 2020-07-01 | 2020-07-02 |  | 2020-07-01 | 2020-07-02 | 2d | -1d | 0d | start no earlier than 2020-07-01 | 薛松 | 16h |
| 107 | 2.7.2 | 增加任务状态查询功能? | 5d | 2020-07-03 | 2020-07-09 | 106 |  |  |  | -1d | 0d |  | 薛松 | 40h |
| 109 | 2.8 | **支持成熟红细胞分类显示** | 3d | 2020-07-27 | 2020-07-29 | 98 | 2020-06-01 | 2020-06-01 | 1d? | 1d |  |  |  | 24h |
| 110 | 2.8.1 | 支持红细胞分类 | 1d | 2020-07-27 | 2020-07-27 |  |  |  |  | 1d | 0d |  | 薛松 | 8h |
| 111 | 2.8.2 | 支持红细胞视图显示 | 2d | 2020-07-28 | 2020-07-29 | 110 |  |  |  | 1d |  |  | 薛松 | 16h |

Notes:
- 84: 当前类别使用一级菜单, 另一个family使用二级
- 86: 是不是提前下载下来?
- 90: 价值待评估
- 91: 价值待评估
- 103: 至少支持当前修改过的细胞的过滤

| ID | WBS | Task | Type | Duration | Start | Finish | Predecessors | Total slack | Free slack | Constraint | Resources | Work |
| --- | --- | --- | --- | --- | --- | --- | --- | --- | --- | --- | --- | --- |
| 113 | 2.9 | **形态核型融合** |  | 7d | 2020-07-01 | 2020-07-09 | 63 | 15d |  |  |  | 112h |
| 114 | 2.9.1 | DeepLabel合入核型相关接口 |  | 5d | 2020-07-01 | 2020-07-07 |  | 15d | 0d |  | 薛松 | 40h |
| 115 | 2.9.2 | Frame中增加核型对应的Image页面 |  | 2d | 2020-07-08 | 2020-07-09 | 114 | 15d |  |  | 薛松 | 16h |
| 116 | 2.9.3 | 重构核型的分析窗口, 不再使用Dialog架构 |  | 7d | 2020-07-01 | 2020-07-09 |  | 15d |  |  | 薛松 | 56h |
| 118 | 2.10 | 重要BUG修正 |  | 1d? | 2020-07-01 | 2020-07-01 | 63 | 21d |  |  |  |  |
| 120 | 2.11 | 一般BUG修改 |  | 1d? | 2020-07-01 | 2020-07-01 | 63 | 21d |  |  |  |  |
| 122 | 2.12 | **形态客户端用户手册** |  | 8d | 2020-07-01 | 2020-07-10 |  | 14d |  |  |  | 104h |
| 123 | 2.12.1 | 拟定大纲 |  | 3d | 2020-07-01 | 2020-07-03 |  | 14d | 0d | start no earlier than 2020-07-01 | 薛松 | 24h |
| 124 | 2.12.2 | 文字手册 |  | 5d | 2020-07-06 | 2020-07-10 | 123 | 14d |  |  | 测试1 | 40h |
| 125 | 2.12.3 | 视频录像 |  | 5d | 2020-07-06 | 2020-07-10 | 123 | 14d |  |  | 测试1 | 40h |
| 127 | 2.13 | **版本发布** |  | 44d? | 2020-06-01 | 2020-07-31 |  | 0d |  |  |  | 56h |
| 128 | 2.13.1 | **V1R1C01C01B0701版本** |  | 2d | 2020-07-01 | 2020-07-02 |  | -2d | 0d |  |  | 32h |
| 129 | 2.13.1.1 | 版本测试 |  | 2d | 2020-07-01 | 2020-07-02 |  | -2d | 0d | start no earlier than 2020-07-01 | 测试1 | 32h |
| 130 | 2.13.1.2 | V1R1C01B0701发布 | milestone | 0d | 2020-07-01 | 2020-07-01 | 129 | -2d | 0d | must start on 2020-07-01 | 薛松 |  |
| 131 | 2.13.2 | **V1R1C01B0710版本** |  | 29d? | 2020-06-01 | 2020-07-09 |  |  |  |  |  | 8h |
| 132 | 2.13.2.1 | 版本测试 |  | 1d | 2020-07-10 | 2020-07-10 | 105 | -1d | 0d | start no earlier than 2020-07-09 | 测试1 | 8h |
| 133 | 2.13.2.2 | V1R1C01B0710发布(河北二院) | milestone | 0d | 2020-07-10 | 2020-07-10 | 132 | -1d | 0d | must start on 2020-07-10 | 薛松 |  |
| 134 | 2.13.3 | **V1R1C01B0720版本** |  | 1d | 2020-07-20 | 2020-07-20 |  | -1d | 0d |  |  | 8h |
| 135 | 2.13.3.1 | 版本测试 |  | 1d | 2020-07-20 | 2020-07-20 |  | -1d | 0d | start no earlier than 2020-07-19 | 测试1 | 8h |
| 136 | 2.13.3.2 | V1R1C01B0720发布 | milestone | 0d | 2020-07-20 | 2020-07-20 | 135 | -1d | 0d | must start on 2020-07-20 | 薛松 |  |
| 137 | 2.13.4 | **V1R1C01B0730版本** |  | 2d | 2020-07-29 | 2020-07-31 |  | 0d |  |  |  | 8h |
| 138 | 2.13.4.1 | 版本测试 |  | 1d | 2020-07-29 | 2020-07-29 |  | 1d |  | start no earlier than 2020-07-29 | 测试1 | 8h |
| 139 | 2.13.4.2 | V1R1C01B0730发布 | milestone | 0d | 2020-07-31 | 2020-07-31 | 138 | 0d |  | must start on 2020-07-31 | 薛松 |  |

Notes:
- 130: 6月份修改合入
- 133: 至少要支持和扫描软件融合.
